Schedule from MS Project, 2022-10-03 to 2023-01-26, costs in $.

## Calendars

- Standard: Mon-Fri 08:00-12:00, 13:00-17:00; Sat-Sun off.

## Resources

| Resource | Rate |
| --- | --- |
| Vinh | 15 |
| Sang | 15 |
| Chủ | 15 |
| Khánh | 15 |
| Nhật | 15 |
| TestServer | 100 |
| Sensor-Kit | 250 |
| Figma-Pro |  |
| Travel |  |

## Schedule

| ID | WBS | Task | Duration | Start | Finish | Predecessors | Total slack | Free slack | Resources | Work | Cost |
| --- | --- | --- | --- | --- | --- | --- | --- | --- | --- | --- | --- |
| 1 | 1 | **Total** | 84d | 2022-10-03 | 2023-01-26 |  | 0d |  |  | 2752h | 41,280 |
| 2 | 1.1 | **XÁC ĐỊNH YÊU CẦU CHUNG** | 56h | 2022-10-03 | 2022-10-11 |  |  |  |  | 168h | 2,520 |
| 3 | 1.1.1 | **Thu thập yêu cầu** | 4d? | 2022-10-03 | 2022-10-06 |  | 10d |  |  | 128h | 1,920 |
| 4 | 1.1.1.1 | Gặp gỡ khách hàng | 1d? | 2022-10-03 | 2022-10-03 |  | 10d | 0d | Vinh | 8h | 120 |
| 5 | 1.1.1.2 | Phân tích yêu cầu của khách hàng | 2d | 2022-10-04 | 2022-10-05 | 4 | 10d | 0d | Sang; Chủ; Khánh; Nhật; Vinh | 80h | 1,200 |
| 6 | 1.1.1.3 | Họp đội DEV, tổng hợp ý kiến | 1d? | 2022-10-06 | 2022-10-06 | 5 | 10d | 0d | Sang; Chủ; Khánh; Nhật; Vinh | 40h | 600 |
| 7 | 1.1.2 | **Xây dựng đề án** | 3d? | 2022-10-07 | 2022-10-11 |  | 10d |  |  | 40h | 600 |
| 8 | 1.1.2.1 | Viết đề án | 2d | 2022-10-07 | 2022-10-10 | 6 | 10d | 0d | Chủ; Sang | 24h | 360 |
| 9 | 1.1.2.2 | Trình bày đề án với khách hàng | 1d? | 2022-10-11 | 2022-10-11 | 8 | 10d |  | Nhật; Khánh | 16h | 240 |
| 10 | 1.2 | **THIẾT KẾ HỆ THỐNG** | 28d | 2022-10-12 | 2022-11-18 | 2 | 10d | 0d |  | 1024h | 15,360 |
| 11 | 1.2.1 | Thiết kế kiến trúc hệ thống | 56h | 2022-10-12 | 2022-10-20 |  | 10d | 0d | Sang; Chủ; Khánh; Nhật; Vinh | 280h | 4,200 |
| 12 | 1.2.2 | **Vẽ các lược đồ minh họa cho các chức năng hệ thống** | 7d | 2022-10-21 | 2022-10-31 | 11 | 10d | 0d |  | 280h | 4,200 |
| 13 | 1.2.2.1 | Xem trạng các thiết bị của từng phòng | 56h | 2022-10-21 | 2022-10-31 | 11 | 10d |  | Vinh | 56h | 840 |
| 14 | 1.2.2.2 | Xem lượng điện tiêu thụ | 56h | 2022-10-21 | 2022-10-31 | 11 | 10d |  | Sang | 56h | 840 |
| 15 | 1.2.2.3 | Điều khiển các thiết bị | 56h | 2022-10-21 | 2022-10-31 | 11 | 10d |  | Chủ | 56h | 840 |
| 16 | 1.2.2.4 | Cảnh báo khi có bất thường xảy ra (thiết bị hoạt động khi không có người…) | 56h | 2022-10-21 | 2022-10-31 | 11 | 10d |  | Khánh | 56h | 840 |
| 17 | 1.2.2.5 | Thống kê dữ liệu | 56h | 2022-10-21 | 2022-10-31 | 11 | 10d |  | Nhật | 56h | 840 |
| 18 | 1.2.3 | **Thiết kế giao diện hệ thống** | 10d | 2022-11-01 | 2022-11-14 | 12 | 10d |  |  | 352h | 5,280 |
| 19 | 1.2.3.1 | Giao diện xác thực người quản lý | 80h | 2022-11-01 | 2022-11-14 | 12 | 14d |  | Vinh | 80h | 1,200 |
| 20 | 1.2.3.2 | Giao diện tổng quát tình trạng của cả tòa nhà. | 80h | 2022-11-01 | 2022-11-14 | 12 | 14d |  | Sang | 80h | 1,200 |
| 21 | 1.2.3.3 | Giao diện điều khiển các thiết bị từng phòng. | 80h | 2022-11-01 | 2022-11-14 | 12 | 14d |  | Chủ | 80h | 1,200 |
| 22 | 1.2.3.4 | Giao diện log cảnh báo | 56h | 2022-11-01 | 2022-11-09 | 12 | 10d | 0d | Khánh | 56h | 840 |
| 23 | 1.2.3.5 | Giao diện thống kê | 56h | 2022-11-01 | 2022-11-09 | 12 | 10d | 0d | Nhật | 56h | 840 |
| 24 | 1.2.4 | Thiết kế Database | 56h | 2022-11-10 | 2022-11-18 | 22, 23 | 10d |  | Nhật; Khánh | 112h | 1,680 |

| ID | WBS | Task | Duration | Start | Finish | Predecessors | Total slack | Free slack | Constraint | Resources | Work | Cost |
| --- | --- | --- | --- | --- | --- | --- | --- | --- | --- | --- | --- | --- |
| 25 | 1.3 | **HIỆN THỰC** | 37d | 2022-11-21 | 2023-01-10 | 10 | 10d | 0d |  |  | 800h | 12,000 |
| 26 | 1.3.1 | **Hiện thực các giao diện của người dùng** | 10d | 2022-11-21 | 2022-12-02 |  | 13d | 10d |  |  | 400h | 6,000 |
| 27 | 1.3.1.1 | Giao diện xác thực người quản lý | 80h | 2022-11-21 | 2022-12-02 |  | 13d |  |  | Vinh | 80h | 1,200 |
| 28 | 1.3.1.2 | Giao diện tổng quát tình trạng của cả tòa nhà. | 80h | 2022-11-21 | 2022-12-02 |  | 13d |  |  | Sang | 80h | 1,200 |
| 29 | 1.3.1.3 | Giao diện điều khiển các thiết bị từng phòng. | 80h | 2022-11-21 | 2022-12-02 |  | 13d |  |  | Chủ | 80h | 1,200 |
| 30 | 1.3.1.4 | Giao diện log cảnh báo | 80h | 2022-11-21 | 2022-12-02 |  | 13d |  |  | Khánh | 80h | 1,200 |
| 31 | 1.3.1.5 | Giao diện thống kê | 80h | 2022-11-21 | 2022-12-02 |  | 13d |  |  | Nhật | 80h | 1,200 |
| 32 | 1.3.2 | **Hiện thực các chức năng phần backend** | 22d | 2022-12-12 | 2023-01-10 |  |  |  |  |  | 400h | 6,000 |
| 33 | 1.3.2.1 | Hiện thực API cho việc xem dữ liệu các thiết bị từ các phòng học | 80h | 2022-12-05 | 2022-12-16 |  | 3d | 0d | start no earlier than 2022-12-05 | Vinh | 80h | 1,200 |
| 34 | 1.3.2.2 | Hiện thực API cho việc thống kê dữ liệu người dùng | 80h | 2022-12-05 | 2022-12-16 |  | 3d | 0d | start no earlier than 2022-12-05 | Sang | 80h | 1,200 |
| 35 | 1.3.2.3 | Hiện thực API xem log của hệ thống | 80h | 2022-12-05 | 2022-12-16 |  | 3d | 0d | start no earlier than 2022-12-05 | Chủ | 80h | 1,200 |
| 36 | 1.3.2.4 | Xử lí các dòng dữ liệu từ các thiết bị IOT | 80h | 2022-12-05 | 2022-12-16 |  | 3d | 0d | start no earlier than 2022-12-05 | Khánh | 80h | 1,200 |
| 37 | 1.3.2.5 | Tự động phát hiện những bất thường xảy ra (quên tắt điện, quá tải) và gửi cảnh báo đến người quản lí | 56h | 2022-12-05 | 2022-12-13 |  | 6d | 3d | start no earlier than 2022-12-05 | Nhật | 56h | 840 |
| 38 | 1.3.2.6 | Xây dựng bảo mật hệ thống | 24h | 2022-12-14 | 2022-12-16 |  | 29d |  | start no earlier than 2022-12-14 | Nhật | 24h | 360 |
| 39 | 1.4 | **KIỂM THỬ CÁC CHỨC NĂNG** | 16d | 2022-12-19 | 2023-01-09 | 26, 33, 34, 35, 36, 37 | 1d |  |  |  | 448h | 6,720 |
| 40 | 1.4.1 | **Kiểm tra giao diện** | 7d | 2022-12-19 | 2022-12-27 |  | 3d | 2d |  |  | 280h | 4,200 |
| 41 | 1.4.1.1 | Giao diện xác thực người quản lý | 56h | 2022-12-19 | 2022-12-27 |  | 3d |  | start no earlier than 2022-12-19 | Vinh | 56h | 840 |
| 42 | 1.4.1.2 | Giao diện tổng quát tình trạng của cả tòa nhà. | 56h | 2022-12-19 | 2022-12-27 |  | 3d |  | start no earlier than 2022-12-19 | Sang | 56h | 840 |
| 43 | 1.4.1.3 | Giao diện điều khiển các thiết bị từng phòng. | 56h | 2022-12-19 | 2022-12-27 |  | 3d |  | start no earlier than 2022-12-19 | Chủ | 56h | 840 |
| 44 | 1.4.1.4 | Giao diện log cảnh báo | 56h | 2022-12-19 | 2022-12-27 |  | 3d |  | start no earlier than 2022-12-19 | Khánh | 56h | 840 |
| 45 | 1.4.1.5 | Giao diện thống kê | 56h | 2022-12-19 | 2022-12-27 |  | 3d |  | start no earlier than 2022-12-19 | Nhật | 56h | 840 |
| 46 | 1.4.2 | **Kiểm tra hiệu suất** | 7d | 2022-12-30 | 2023-01-09 | 40 | 1d |  |  |  | 168h | 2,520 |
| 47 | 1.4.2.1 | Kiểm tra các luồng thực thi chính của hệ thống | 56h | 2022-12-30 | 2023-01-09 |  | 1d |  | start no earlier than 2022-12-30 | Sang | 56h | 840 |
| 48 | 1.4.2.2 | Kiểm tra khả năng chịu tải của hệ thống | 56h | 2022-12-30 | 2023-01-09 |  | 1d |  | start no earlier than 2022-12-30 | Chủ | 56h | 840 |
| 49 | 1.4.2.3 | Kiểm tra tốc độ kết nối và tín hiệu điều khiển các thiết bị IOT | 56h | 2022-12-30 | 2023-01-09 |  | 1d |  | start no earlier than 2022-12-30 | Khánh | 56h | 840 |

| ID | WBS | Task | Type | Duration | Start | Finish | Predecessors | Total slack | Constraint | Resources | Work | Cost |
| --- | --- | --- | --- | --- | --- | --- | --- | --- | --- | --- | --- | --- |
| 50 | 1.5 | **TRIỂN KHAI HỆ THỐNG** |  | 12d | 2023-01-11 | 2023-01-26 | 25, 39 | 0d |  |  | 312h | 4,680 |
| 51 | 1.5.1 | **Triển khai các hạ tầng mạng** |  | 7d | 2023-01-11 | 2023-01-19 |  | 0d |  |  | 168h | 2,520 |
| 52 | 1.5.1.1 | Thiết kế sơ đồ mạng kết nối thiết bị |  | 56h | 2023-01-11 | 2023-01-19 |  | 0d | start no earlier than 2023-01-06 | Vinh [50%]; Sang [50%] | 56h | 840 |
| 53 | 1.5.1.2 | Lắp đặt máy chủ |  | 56h | 2023-01-11 | 2023-01-19 |  | 0d | start no earlier than 2023-01-06 | Nhật [50%]; Khánh [50%] | 56h | 840 |
| 54 | 1.5.1.3 | Kết nối các thiết bị với trung tâm điều khiển |  | 56h | 2023-01-11 | 2023-01-19 |  | 0d | start no earlier than 2023-01-06 | Chủ | 56h | 840 |
| 55 | 1.5.2 | **Triển khai hệ thống lên máy chủ của tòa H3** |  | 3d | 2023-01-20 | 2023-01-24 | 51 | 0d |  |  | 96h | 1,440 |
| 56 | 1.5.2.1 | Cài đặt HĐH Server cho máy chủ và các giao thức, dịch vụ mạng Server |  | 24h | 2023-01-20 | 2023-01-24 |  | 0d | start no earlier than 2023-01-16 | Vinh | 24h | 360 |
| 57 | 1.5.2.2 | Cài đặt Firewall Server, Web Server, Mail Server nội bộ trên các hệ điều hành Windows và Linux |  | 24h | 2023-01-20 | 2023-01-24 |  | 0d | start no earlier than 2023-01-16 | Khánh | 24h | 360 |
| 58 | 1.5.2.3 | Thiết Lập danh sách phòng ban và tài khoản người dùng trong Domain. |  | 24h | 2023-01-20 | 2023-01-24 |  | 0d | start no earlier than 2023-01-16 | Nhật | 24h | 360 |
| 59 | 1.5.2.4 | Tạo những vùng dữ liệu và phân chia quyền hạn của từng user và phòng ban. |  | 24h | 2023-01-20 | 2023-01-24 |  | 0d | start no earlier than 2023-01-16 | Sang | 24h | 360 |
| 60 | 1.5.3 | **Chuyển giao hệ thống cho khách hàng** |  | 2d | 2023-01-25 | 2023-01-26 | 55 | 0d |  |  | 48h | 720 |
| 61 | 1.5.3.1 | Chuyển giao hồ sơ thiết kế hệ thống và sơ đồ mạng |  | 16h | 2023-01-25 | 2023-01-26 |  | 0d | start no earlier than 2023-01-20 | Vinh; Nhật | 32h | 480 |
| 62 | 1.5.3.2 | Hướng dẫn sử dụng và quản trị mạng. |  | 8h | 2023-01-25 | 2023-01-25 |  | 1d | start no earlier than 2023-01-20 | Chủ; Khánh | 16h | 240 |
| 63 | 1.6 | **Họp định kì hàng tuần với đội dev** |  | 66d | 2022-10-03 | 2023-01-02 |  | 0d |  |  |  |  |
| 64 | 1.6.1 | Họp định kì hàng tuần với đội dev 1 | manual | 1d | 2022-10-03 | 2022-10-03 |  |  | start no earlier than 2022-10-03 |  |  |  |
| 65 | 1.6.2 | Họp định kì hàng tuần với đội dev 2 | manual | 1d | 2022-10-10 | 2022-10-10 |  |  | start no earlier than 2022-10-10 |  |  |  |
| 66 | 1.6.3 | Họp định kì hàng tuần với đội dev 3 | manual | 1d | 2022-10-17 | 2022-10-17 |  |  | start no earlier than 2022-10-17 |  |  |  |
| 67 | 1.6.4 | Họp định kì hàng tuần với đội dev 4 | manual | 1d | 2022-10-24 | 2022-10-24 |  |  | start no earlier than 2022-10-24 |  |  |  |
| 68 | 1.6.5 | Họp định kì hàng tuần với đội dev 5 | manual | 1d | 2022-10-31 | 2022-10-31 |  |  | start no earlier than 2022-10-31 |  |  |  |
| 69 | 1.6.6 | Họp định kì hàng tuần với đội dev 6 | manual | 1d | 2022-11-07 | 2022-11-07 |  |  | start no earlier than 2022-11-07 |  |  |  |
| 70 | 1.6.7 | Họp định kì hàng tuần với đội dev 7 | manual | 1d | 2022-11-14 | 2022-11-14 |  |  | start no earlier than 2022-11-14 |  |  |  |
| 71 | 1.6.8 | Họp định kì hàng tuần với đội dev 8 | manual | 1d | 2022-11-21 | 2022-11-21 |  |  | start no earlier than 2022-11-21 |  |  |  |
| 72 | 1.6.9 | Họp định kì hàng tuần với đội dev 9 | manual | 1d | 2022-11-28 | 2022-11-28 |  |  | start no earlier than 2022-11-28 |  |  |  |
| 73 | 1.6.10 | Họp định kì hàng tuần với đội dev 10 | manual | 1d | 2022-12-05 | 2022-12-05 |  |  | start no earlier than 2022-12-05 |  |  |  |
| 74 | 1.6.11 | Họp định kì hàng tuần với đội dev 11 | manual | 1d | 2022-12-12 | 2022-12-12 |  |  | start no earlier than 2022-12-12 |  |  |  |
| 75 | 1.6.12 | Họp định kì hàng tuần với đội dev 12 | manual | 1d | 2022-12-19 | 2022-12-19 |  |  | start no earlier than 2022-12-19 |  |  |  |
| 76 | 1.6.13 | Họp định kì hàng tuần với đội dev 13 | manual | 1d | 2022-12-26 | 2022-12-26 |  |  | start no earlier than 2022-12-26 |  |  |  |
| 77 | 1.6.14 | Họp định kì hàng tuần với đội dev 14 | manual | 1d | 2023-01-02 | 2023-01-02 |  |  | start no earlier than 2023-01-02 |  |  |  |
