Schedule from MS Project, 2022-10-03 to 2023-01-11, status date 2022-11-11, costs in $, A marks actual dates.

## Calendars

- Standard: Mon-Fri 08:00-12:00, 13:00-17:00; Sat-Sun off.

## Resources

| Resource | Rate |
| --- | --- |
| Vinh | 15 |
| Sang | 15 |
| Chủ | 15 |
| Khánh | 15 |
| Nhật | 15 |

## Schedule

| ID | WBS | Task | Duration | Start | Finish | Predecessors | Complete | Remaining | Baseline start | Baseline finish | Baseline duration | Baseline 1 start | Baseline 1 finish | Total slack | Resources | Work | Actual work | Cost | Baseline cost | Actual cost |
| --- | --- | --- | --- | --- | --- | --- | --- | --- | --- | --- | --- | --- | --- | --- | --- | --- | --- | --- | --- | --- |
| 1 | 1 | **Total** | 73d? | 2022-10-03 A | 2023-01-11 |  | 24% | 55.51d? | 2022-10-03 | 2023-01-11 | 73d? | 2022-10-03 | 2023-01-11 |  |  | 2520h | 1032h | 37,800 | 38,760 | 15,480 |
| 2 | 1.1 | **XÁC ĐỊNH YÊU CẦU CHUNG** | 56h? | 2022-10-03 A | 2022-10-11 A |  | 100% |  | 2022-10-03 | 2022-10-11 | 56h? | 2022-10-03 | 2022-10-11 |  |  | 176h | 176h | 2,640 | 2,640 | 2,640 |
| 3 | 1.1.1 | **Thu thập yêu cầu** | 4d? | 2022-10-03 A | 2022-10-06 A |  | 100% |  | 2022-10-03 | 2022-10-06 | 4d? | 2022-10-03 | 2022-10-06 |  |  | 128h | 128h | 1,920 | 1,920 | 1,920 |
| 4 | 1.1.1.1 | Gặp gỡ khách hàng | 8h | 2022-10-03 A | 2022-10-03 A |  | 100% |  | 2022-10-03 | 2022-10-03 | 8h | 2022-10-03 | 2022-10-03 |  | Vinh | 8h | 8h | 120 | 120 | 120 |
| 5 | 1.1.1.2 | Phân tích yêu cầu của khách hàng | 16h | 2022-10-04 A | 2022-10-05 A | 4 | 100% |  | 2022-10-04 | 2022-10-05 | 16h | 2022-10-04 | 2022-10-05 |  | Sang; Chủ; Khánh; Nhật; Vinh | 80h | 80h | 1,200 | 1,200 | 1,200 |
| 6 | 1.1.1.3 | Họp đội DEV, tổng hợp ý kiến | 1d? | 2022-10-06 A | 2022-10-06 A | 5 | 100% |  | 2022-10-06 | 2022-10-06 | 1d? | 2022-10-06 | 2022-10-06 |  | Sang; Chủ; Khánh; Nhật; Vinh | 40h | 40h | 600 | 600 | 600 |
| 7 | 1.1.2 | **Xây dựng đề án** | 3d? | 2022-10-07 A | 2022-10-11 A |  | 100% |  | 2022-10-07 | 2022-10-11 | 3d? | 2022-10-07 | 2022-10-11 |  |  | 48h | 48h | 720 | 720 | 720 |
| 8 | 1.1.2.1 | Viết đề án | 2d | 2022-10-07 A | 2022-10-10 A | 6 | 100% |  | 2022-10-07 | 2022-10-10 | 2d | 2022-10-07 | 2022-10-10 |  | Sang; Chủ | 32h | 32h | 480 | 480 | 480 |
| 9 | 1.1.2.2 | Trình bày đề án với khách hàng | 1d? | 2022-10-11 A | 2022-10-11 A | 8 | 100% |  | 2022-10-11 | 2022-10-11 | 1d? | 2022-10-11 | 2022-10-11 |  | Nhật; Khánh | 16h | 16h | 240 | 240 | 240 |
| 10 | 1.2 | **THIẾT KẾ HỆ THỐNG** | 28d | 2022-10-12 A | 2022-11-18 | 2 | 91% | 2.52d | 2022-10-12 | 2022-11-18 | 28d | 2022-10-12 | 2022-11-18 | 0d |  | 960h | 856h | 14,400 | 15,360 | 12,840 |
| 11 | 1.2.1 | Thiết kế kiến trúc hệ thống | 48h | 2022-10-12 A | 2022-10-19 A |  | 100% |  | 2022-10-12 | 2022-10-20 | 56h | 2022-10-12 | 2022-10-20 |  | Sang; Chủ; Khánh; Nhật; Vinh | 240h | 240h | 3,600 | 4,200 | 3,600 |
| 12 | 1.2.2 | **Vẽ các lược đồ minh họa cho các chức năng hệ thống** | 7d | 2022-10-20 A | 2022-10-28 A | 11 | 100% |  | 2022-10-21 | 2022-10-31 | 7d | 2022-10-21 | 2022-10-31 |  |  | 240h | 240h | 3,600 | 4,200 | 3,600 |
| 13 | 1.2.2.1 | Xem trạng các thiết bị của từng phòng | 48h | 2022-10-20 A | 2022-10-27 A |  | 100% |  | 2022-10-21 | 2022-10-31 | 56h | 2022-10-21 | 2022-10-31 |  | Vinh | 48h | 48h | 720 | 840 | 720 |
| 14 | 1.2.2.2 | Xem lượng điện tiêu thụ | 40h | 2022-10-20 A | 2022-10-26 A |  | 100% |  | 2022-10-21 | 2022-10-31 | 56h | 2022-10-21 | 2022-10-31 |  | Sang | 40h | 40h | 600 | 840 | 600 |
| 15 | 1.2.2.3 | Điều khiển các thiết bị | 48h | 2022-10-20 A | 2022-10-27 A |  | 100% |  | 2022-10-21 | 2022-10-31 | 56h | 2022-10-21 | 2022-10-31 |  | Chủ | 48h | 48h | 720 | 840 | 720 |
| 16 | 1.2.2.4 | Cảnh báo khi có bất thường xảy ra (thiết bị hoạt động khi không có người…) | 48h | 2022-10-20 A | 2022-10-27 A |  | 100% |  | 2022-10-21 | 2022-10-31 | 56h | 2022-10-21 | 2022-10-31 |  | Khánh | 48h | 48h | 720 | 840 | 720 |
| 17 | 1.2.2.5 | Thống kê dữ liệu | 56h | 2022-10-20 A | 2022-10-28 A |  | 100% |  | 2022-10-21 | 2022-10-31 | 56h | 2022-10-21 | 2022-10-31 |  | Nhật | 56h | 56h | 840 | 840 | 840 |
| 18 | 1.2.3 | **Thiết kế giao diện hệ thống** | 11d | 2022-10-28 A | 2022-11-11 | 12 | 93% | 0.72d | 2022-11-01 | 2022-11-14 | 10d | 2022-11-01 | 2022-11-14 | 5d |  | 368h | 344h | 5,520 | 5,280 | 5,160 |
| 19 | 1.2.3.1 | Giao diện xác thực người quản lý | 80h | 2022-10-31 A | 2022-11-11 |  | 90% | 8h | 2022-11-01 | 2022-11-14 | 80h | 2022-11-01 | 2022-11-14 | 5d | Vinh | 80h | 72h | 1,200 | 1,200 | 1,080 |
| 20 | 1.2.3.2 | Giao diện tổng quát tình trạng của cả tòa nhà. | 80h | 2022-10-31 A | 2022-11-11 |  | 90% | 8h | 2022-11-01 | 2022-11-14 | 80h | 2022-11-01 | 2022-11-14 | 5d | Sang | 80h | 72h | 1,200 | 1,200 | 1,080 |
| 21 | 1.2.3.3 | Giao diện điều khiển các thiết bị từng phòng. | 80h | 2022-10-28 A | 2022-11-10 |  | 90% | 8h | 2022-11-01 | 2022-11-14 | 80h | 2022-11-01 | 2022-11-14 | 6d | Chủ | 80h | 72h | 1,200 | 1,200 | 1,080 |
| 22 | 1.2.3.4 | Giao diện log cảnh báo | 72h | 2022-10-28 A | 2022-11-09 A |  | 100% |  | 2022-11-01 | 2022-11-09 | 56h | 2022-11-01 | 2022-11-09 |  | Khánh | 72h | 72h | 1,080 | 840 | 1,080 |
| 23 | 1.2.3.5 | Giao diện thống kê | 56h | 2022-11-01 A | 2022-11-09 A |  | 100% |  | 2022-11-01 | 2022-11-09 | 56h | 2022-11-01 | 2022-11-09 |  | Nhật | 56h | 56h | 840 | 840 | 840 |
| 24 | 1.2.4 | Thiết kế Database | 56h | 2022-11-10 A | 2022-11-18 | 22, 23 | 29% | 40h | 2022-11-10 | 2022-11-18 | 56h | 2022-11-10 | 2022-11-18 | 0d | Nhật; Khánh | 112h | 32h | 1,680 | 1,680 | 480 |

| ID | WBS | Task | Duration | Start | Finish | Predecessors | Baseline start | Baseline finish | Baseline duration | Baseline 1 start | Baseline 1 finish | Total slack | Resources | Work | Cost | Baseline cost |
| --- | --- | --- | --- | --- | --- | --- | --- | --- | --- | --- | --- | --- | --- | --- | --- | --- |
| 25 | 1.3 | **HIỆN THỰC** | 20d | 2022-11-21 | 2022-12-16 | 10 | 2022-11-21 | 2022-12-16 | 20d | 2022-11-21 | 2022-12-16 | 0d |  | 800h | 12,000 | 12,000 |
| 26 | 1.3.1 | **Hiện thực các giao diện của người dùng** | 20d | 2022-11-21 | 2022-12-16 |  | 2022-11-21 | 2022-12-16 | 20d | 2022-11-21 | 2022-12-16 | 0d |  | 368h | 5,520 | 5,520 |
| 27 | 1.3.1.1 | Giao diện xác thực người quản lý | 160h | 2022-11-21 | 2022-12-16 |  | 2022-11-21 | 2022-12-16 | 160h | 2022-11-21 | 2022-12-16 | 0d | Vinh [50%] | 80h | 1,200 | 1,200 |
| 28 | 1.3.1.2 | Giao diện tổng quát tình trạng của cả tòa nhà. | 160h | 2022-11-21 | 2022-12-16 |  | 2022-11-21 | 2022-12-16 | 160h | 2022-11-21 | 2022-12-16 | 0d | Sang [50%] | 80h | 1,200 | 1,200 |
| 29 | 1.3.1.3 | Giao diện điều khiển các thiết bị từng phòng. | 160h | 2022-11-21 | 2022-12-16 |  | 2022-11-21 | 2022-12-16 | 160h | 2022-11-21 | 2022-12-16 | 0d | Chủ [50%] | 80h | 1,200 | 1,200 |
| 30 | 1.3.1.4 | Giao diện log cảnh báo | 80h | 2022-11-21 | 2022-12-02 |  | 2022-11-21 | 2022-12-02 | 80h | 2022-11-21 | 2022-12-02 | 0d | Khánh | 80h | 1,200 | 1,200 |
| 31 | 1.3.1.5 | Giao diện thống kê | 160h | 2022-11-21 | 2022-12-16 |  | 2022-11-21 | 2022-12-16 | 160h | 2022-11-21 | 2022-12-16 | 0d | Nhật [30%] | 48h | 720 | 720 |
| 32 | 1.3.2 | **Hiện thực các chức năng phần backend** | 20d | 2022-11-21 | 2022-12-16 |  | 2022-11-21 | 2022-12-16 | 20d | 2022-11-21 | 2022-12-16 | 0d |  | 432h | 6,480 | 6,480 |
| 33 | 1.3.2.1 | Hiện thực API cho việc xem dữ liệu các thiết bị từ các phòng học | 160h | 2022-11-21 | 2022-12-16 |  | 2022-11-21 | 2022-12-16 | 160h | 2022-11-21 | 2022-12-16 | 0d | Vinh [50%] | 80h | 1,200 | 1,200 |
| 34 | 1.3.2.2 | Giao diện tổng quát tình trạng của cả tòa nhà. | 160h | 2022-11-21 | 2022-12-16 |  | 2022-11-21 | 2022-12-16 | 160h | 2022-11-21 | 2022-12-16 | 0d | Sang [50%] | 80h | 1,200 | 1,200 |
| 35 | 1.3.2.3 | Hiện thực API cho việc thống kê dữ liệu người dùng | 160h | 2022-11-21 | 2022-12-16 |  | 2022-11-21 | 2022-12-16 | 160h | 2022-11-21 | 2022-12-16 | 0d | Chủ [50%] | 80h | 1,200 | 1,200 |
| 36 | 1.3.2.4 | Hiện thực API xem log của hệ thống | 80h | 2022-12-05 | 2022-12-16 | 30 | 2022-12-05 | 2022-12-16 | 80h | 2022-12-05 | 2022-12-16 | 0d | Khánh [50%] | 40h | 600 | 600 |
| 37 | 1.3.2.5 | Xử lí các dòng dữ liệu từ các thiết bị IOT | 80h | 2022-12-05 | 2022-12-16 | 30 | 2022-12-05 | 2022-12-16 | 80h | 2022-12-05 | 2022-12-16 | 0d | Khánh [50%] | 40h | 600 | 600 |
| 38 | 1.3.2.6 | Tự động phát hiện những bất thường xảy ra (quên tắt điện, quá tải) và gửi cảnh báo đến người quản lí | 160h | 2022-11-21 | 2022-12-16 |  | 2022-11-21 | 2022-12-16 | 160h | 2022-11-21 | 2022-12-16 | 0d | Nhật [40%] | 64h | 960 | 960 |
| 39 | 1.3.2.7 | Xây dựng bảo mật hệ thống | 160h | 2022-11-21 | 2022-12-16 |  | 2022-11-21 | 2022-12-16 | 160h | 2022-11-21 | 2022-12-16 | 0d | Nhật [30%] | 48h | 720 | 720 |
| 40 | 1.4 | **KIỂM THỬ CÁC CHỨC NĂNG** | 10d | 2022-12-19 | 2022-12-30 | 25 | 2022-12-19 | 2022-12-30 | 10d | 2022-12-19 | 2022-12-30 | 0d |  | 320h | 4,800 | 4,800 |
| 41 | 1.4.1 | **Kiểm tra giao diện** | 5d | 2022-12-19 | 2022-12-23 |  | 2022-12-19 | 2022-12-23 | 5d | 2022-12-19 | 2022-12-23 | 0d |  | 200h | 3,000 | 3,000 |
| 42 | 1.4.1.1 | Giao diện xác thực người quản lý | 40h | 2022-12-19 | 2022-12-23 |  | 2022-12-19 | 2022-12-23 | 40h | 2022-12-19 | 2022-12-23 | 0d | Vinh | 40h | 600 | 600 |
| 43 | 1.4.1.2 | Giao diện tổng quát tình trạng của cả tòa nhà. | 5d | 2022-12-19 | 2022-12-23 |  | 2022-12-19 | 2022-12-23 | 5d | 2022-12-19 | 2022-12-23 | 0d | Sang | 40h | 600 | 600 |
| 44 | 1.4.1.3 | Giao diện điều khiển các thiết bị từng phòng. | 5d | 2022-12-19 | 2022-12-23 |  | 2022-12-19 | 2022-12-23 | 5d | 2022-12-19 | 2022-12-23 | 0d | Chủ | 40h | 600 | 600 |
| 45 | 1.4.1.4 | Giao diện log cảnh báo | 5d | 2022-12-19 | 2022-12-23 |  | 2022-12-19 | 2022-12-23 | 5d | 2022-12-19 | 2022-12-23 | 0d | Khánh | 40h | 600 | 600 |
| 46 | 1.4.1.5 | Giao diện thống kê | 5d | 2022-12-19 | 2022-12-23 |  | 2022-12-19 | 2022-12-23 | 5d | 2022-12-19 | 2022-12-23 | 0d | Nhật | 40h | 600 | 600 |
| 47 | 1.4.2 | **Kiểm tra hiệu suất** | 5d | 2022-12-26 | 2022-12-30 | 41 | 2022-12-26 | 2022-12-30 | 5d | 2022-12-26 | 2022-12-30 | 0d |  | 120h | 1,800 | 1,800 |
| 48 | 1.4.2.1 | Kiểm tra các luồng thực thi chính của hệ thống | 40h | 2022-12-26 | 2022-12-30 |  | 2022-12-26 | 2022-12-30 | 40h | 2022-12-26 | 2022-12-30 | 0d | Sang | 40h | 600 | 600 |
| 49 | 1.4.2.2 | Kiểm tra khả năng chịu tải của hệ thống | 40h | 2022-12-26 | 2022-12-30 |  | 2022-12-26 | 2022-12-30 | 40h | 2022-12-26 | 2022-12-30 | 0d | Chủ | 40h | 600 | 600 |
| 50 | 1.4.2.3 | Kiểm tra tốc độ kết nối và tín hiệu điều khiển các thiết bị IOT | 40h | 2022-12-26 | 2022-12-30 |  | 2022-12-26 | 2022-12-30 | 40h | 2022-12-26 | 2022-12-30 | 0d | Vinh | 40h | 600 | 600 |

| ID | WBS | Task | Duration | Start | Finish | Predecessors | Complete | Remaining | Baseline start | Baseline finish | Baseline duration | Baseline 1 start | Baseline 1 finish | Total slack | Constraint | Resources | Work | Cost | Baseline cost |
| --- | --- | --- | --- | --- | --- | --- | --- | --- | --- | --- | --- | --- | --- | --- | --- | --- | --- | --- | --- |
| 51 | 1.5 | **TRIỂN KHAI HỆ THỐNG** | 8d | 2023-01-02 | 2023-01-11 | 25, 40 |  |  | 2023-01-02 | 2023-01-11 | 8d | 2023-01-02 | 2023-01-11 | 0d |  |  | 264h | 3,960 | 3,960 |
| 52 | 1.5.1 | **Triển khai các hạ tầng mạng** | 3d | 2023-01-02 | 2023-01-04 |  |  |  | 2023-01-02 | 2023-01-04 | 3d | 2023-01-02 | 2023-01-04 | 0d |  |  | 120h | 1,800 | 1,800 |
| 53 | 1.5.1.1 | Thiết kế sơ đồ mạng kết nối thiết bị | 24h | 2023-01-02 | 2023-01-04 |  |  |  | 2023-01-02 | 2023-01-04 | 24h | 2023-01-02 | 2023-01-04 | 0d |  | Vinh; Sang | 48h | 720 | 720 |
| 54 | 1.5.1.2 | Lắp đặt máy chủ | 24h | 2023-01-02 | 2023-01-04 |  |  |  | 2023-01-02 | 2023-01-04 | 24h | 2023-01-02 | 2023-01-04 | 0d |  | Nhật; Khánh | 48h | 720 | 720 |
| 55 | 1.5.1.3 | Kết nối các thiết bị với trung tâm điều khiển | 24h | 2023-01-02 | 2023-01-04 |  |  |  | 2023-01-02 | 2023-01-04 | 24h | 2023-01-02 | 2023-01-04 | 0d |  | Chủ | 24h | 360 | 360 |
| 56 | 1.5.2 | **Triển khai hệ thống lên máy chủ của tòa H3** | 3d | 2023-01-05 | 2023-01-09 | 52 |  |  | 2023-01-05 | 2023-01-09 | 3d | 2023-01-05 | 2023-01-09 | 0d |  |  | 96h | 1,440 | 1,440 |
| 57 | 1.5.2.1 | Cài đặt HĐH Server cho máy chủ và các giao thức, dịch vụ mạng Server | 24h | 2023-01-05 | 2023-01-09 |  |  |  | 2023-01-05 | 2023-01-09 | 24h | 2023-01-05 | 2023-01-09 | 0d |  | Vinh | 24h | 360 | 360 |
| 58 | 1.5.2.2 | Cài đặt Firewall Server, Web Server, Mail Server nội bộ trên các hệ điều hành Windows và Linux | 24h | 2023-01-05 | 2023-01-09 |  |  |  | 2023-01-05 | 2023-01-09 | 24h | 2023-01-05 | 2023-01-09 | 0d |  | Khánh | 24h | 360 | 360 |
| 59 | 1.5.2.3 | Thiết Lập danh sách phòng ban và tài khoản người dùng trong Domain. | 24h | 2023-01-05 | 2023-01-09 |  |  |  | 2023-01-05 | 2023-01-09 | 24h | 2023-01-05 | 2023-01-09 | 0d |  | Nhật | 24h | 360 | 360 |
| 60 | 1.5.2.4 | Tạo những vùng dữ liệu và phân chia quyền hạn của từng user và phòng ban. | 24h | 2023-01-05 | 2023-01-09 |  |  |  | 2023-01-05 | 2023-01-09 | 24h | 2023-01-05 | 2023-01-09 | 0d |  | Sang | 24h | 360 | 360 |
| 61 | 1.5.3 | **Chuyển giao hệ thống cho khách hàng** | 2d | 2023-01-10 | 2023-01-11 | 56 |  |  | 2023-01-10 | 2023-01-11 | 2d | 2023-01-10 | 2023-01-11 | 0d |  |  | 48h | 720 | 720 |
| 62 | 1.5.3.1 | Chuyển giao hồ sơ thiết kế hệ thống và sơ đồ mạng | 16h | 2023-01-10 | 2023-01-11 |  |  |  | 2023-01-10 | 2023-01-11 | 16h | 2023-01-10 | 2023-01-11 | 0d |  | Vinh; Nhật | 32h | 480 | 480 |
| 63 | 1.5.3.2 | Hướng dẫn sử dụng và quản trị mạng. | 8h | 2023-01-10 | 2023-01-10 |  |  |  | 2023-01-10 | 2023-01-10 | 8h | 2023-01-10 | 2023-01-10 | 1d |  | Chủ; Khánh | 16h | 240 | 240 |
| 64 | 1.6 | **Họp định kì hàng tuần với đội dev** | 65.25d | 2022-10-03 A | 2023-01-02 |  | 43% | 37.29d | 2022-10-03 | 2023-01-02 | 65.25d | 2022-10-03 | 2023-01-02 | 7.75d |  |  |  |  |  |
| 65 | 1.6.1 | Họp định kì hàng tuần với đội dev 1 | 2h | 2022-10-03 A | 2022-10-03 A |  | 100% |  | 2022-10-03 | 2022-10-03 | 2h | 2022-10-03 | 2022-10-03 |  | start no earlier than 2022-10-03 |  |  |  |  |
| 66 | 1.6.2 | Họp định kì hàng tuần với đội dev 2 | 2h | 2022-10-10 A | 2022-10-10 A |  | 100% |  | 2022-10-10 | 2022-10-10 | 2h | 2022-10-10 | 2022-10-10 |  | start no earlier than 2022-10-10 |  |  |  |  |
| 67 | 1.6.3 | Họp định kì hàng tuần với đội dev 3 | 2h | 2022-10-17 A | 2022-10-17 A |  | 100% |  | 2022-10-17 | 2022-10-17 | 2h | 2022-10-17 | 2022-10-17 |  | start no earlier than 2022-10-17 |  |  |  |  |
| 68 | 1.6.4 | Họp định kì hàng tuần với đội dev 4 | 2h | 2022-10-24 A | 2022-10-24 A |  | 100% |  | 2022-10-24 | 2022-10-24 | 2h | 2022-10-24 | 2022-10-24 |  | start no earlier than 2022-10-24 |  |  |  |  |
| 69 | 1.6.5 | Họp định kì hàng tuần với đội dev 5 | 2h | 2022-10-31 A | 2022-10-31 A |  | 100% |  | 2022-10-31 | 2022-10-31 | 2h | 2022-10-31 | 2022-10-31 |  | start no earlier than 2022-10-31 |  |  |  |  |
| 70 | 1.6.6 | Họp định kì hàng tuần với đội dev 6 | 2h | 2022-11-07 A | 2022-11-07 A |  | 100% |  | 2022-11-07 | 2022-11-07 | 2h | 2022-11-07 | 2022-11-07 |  | start no earlier than 2022-11-07 |  |  |  |  |
| 71 | 1.6.7 | Họp định kì hàng tuần với đội dev 7 | 2h | 2022-11-14 | 2022-11-14 |  |  |  | 2022-11-14 | 2022-11-14 | 2h | 2022-11-14 | 2022-11-14 | 43.75d | start no earlier than 2022-11-14 |  |  |  |  |
| 72 | 1.6.8 | Họp định kì hàng tuần với đội dev 8 | 2h | 2022-11-21 | 2022-11-21 |  |  |  | 2022-11-21 | 2022-11-21 | 2h | 2022-11-21 | 2022-11-21 | 38.75d | start no earlier than 2022-11-21 |  |  |  |  |
| 73 | 1.6.9 | Họp định kì hàng tuần với đội dev 9 | 2h | 2022-11-28 | 2022-11-28 |  |  |  | 2022-11-28 | 2022-11-28 | 2h | 2022-11-28 | 2022-11-28 | 33.75d | start no earlier than 2022-11-28 |  |  |  |  |
| 74 | 1.6.10 | Họp định kì hàng tuần với đội dev 10 | 2h | 2022-12-05 | 2022-12-05 |  |  |  | 2022-12-05 | 2022-12-05 | 2h | 2022-12-05 | 2022-12-05 | 28.75d | start no earlier than 2022-12-05 |  |  |  |  |
| 75 | 1.6.11 | Họp định kì hàng tuần với đội dev 11 | 2h | 2022-12-12 | 2022-12-12 |  |  |  | 2022-12-12 | 2022-12-12 | 2h | 2022-12-12 | 2022-12-12 | 23.75d | start no earlier than 2022-12-12 |  |  |  |  |
| 76 | 1.6.12 | Họp định kì hàng tuần với đội dev 12 | 2h | 2022-12-19 | 2022-12-19 |  |  |  | 2022-12-19 | 2022-12-19 | 2h | 2022-12-19 | 2022-12-19 | 18.75d | start no earlier than 2022-12-19 |  |  |  |  |
| 77 | 1.6.13 | Họp định kì hàng tuần với đội dev 13 | 2h | 2022-12-26 | 2022-12-26 |  |  |  | 2022-12-26 | 2022-12-26 | 2h | 2022-12-26 | 2022-12-26 | 13.75d | start no earlier than 2022-12-26 |  |  |  |  |
| 78 | 1.6.14 | Họp định kì hàng tuần với đội dev 14 | 2h | 2023-01-02 | 2023-01-02 |  |  |  | 2023-01-02 | 2023-01-02 | 2h | 2023-01-02 | 2023-01-02 | 8.75d | start no earlier than 2023-01-02 |  |  |  |  |
